# Projet GL

Schedule from Planner, 2023-01-03 to 2023-01-26.
Ensimag

## Calendars

- Default: Mon-Fri 09:00-12:30, 14:00-19:30; Sat-Sun 14:00-19:00.

## Resources

| Resource |
| --- |
| Jorge |
| Logan |
| Nils |
| Virgile |
| Vianney |

## Schedule

| ID | WBS | Task | Duration | Start | Finish | Predecessors | Complete | Resources | Work |
| --- | --- | --- | --- | --- | --- | --- | --- | --- | --- |
| 1 | 1 | **Sprint 1: Hello World** |  | 2023-01-03 09:00 | 2023-01-05 19:30 |  | 85% |  | 69h |
| 2 | 1.1 | A. Analyse sujet + code | 0.75d | 2023-01-04 11:00 | 2023-01-04 18:30 | 19 | 100% | Jorge [50%]; Vianney [50%] | 6h |
| 3 | 1.2 | A. Scripts tests lexer | 0.12d | 2023-01-04 18:30 | 2023-01-04 19:30 | 2 | 100% | Vianney | 1h |
| 4 | 1.3 | A. Scripts tests parser | 0.12d | 2023-01-05 09:00 | 2023-01-05 10:00 | 3 | 100% | Vianney | 1h |
| 5 | 1.4 | A. Parser | 1d | 2023-01-05 10:00 | 2023-01-05 19:30 | 4 | 100% | Vianney | 8h |
| 6 | 1.5 | A. Lexer | 0.12d | 2023-01-04 18:30 | 2023-01-04 19:30 | 2 | 100% | Jorge | 1h |
| 7 | 1.6 | A. Décompilation | 1.12d | 2023-01-05 09:00 | 2023-01-05 19:30 | 6 | 100% | Jorge | 9h |
| 8 | 1.7 | B. Analyse du sujet | 1.38d | 2023-01-04 11:00 | 2023-01-05 14:30 | 19 | 100% | Logan [50%]; Nils [50%] | 11h |
| 9 | 1.8 | B. Base de tests | 0.25d | 2023-01-05 14:30 | 2023-01-05 16:30 | 8 | 100% | Logan [50%]; Nils [50%] | 2h |
| 10 | 1.9 | B. Vérification contextuelle | 0.25d | 2023-01-05 16:30 | 2023-01-05 18:30 | 9 | 100% | Logan [50%]; Nils [50%] | 2h |
| 11 | 1.10 | B. Décoration de l'arbre | 0.12d | 2023-01-05 18:30 | 2023-01-05 19:30 | 10 | 100% | Logan [50%]; Nils [50%] | 1h |
| 12 | 1.11 | C. Analyse sujet + code | 1.5d | 2023-01-04 11:00 | 2023-01-05 15:30 | 19 | 100% | Virgile | 12h |
| 13 | 1.12 | C. Parser CLI | 0.25d | 2023-01-05 15:30 | 2023-01-05 17:30 | 12 | 100% | Virgile | 2h |
| 14 | 1.13 | C. Code assembleur | 0.25d | 2023-01-05 17:30 | 2023-01-05 19:30 | 13 | 100% | Virgile | 2h |
| 15 | 1.14 | G. Charte d'équipe | 0.62d | 2023-01-03 09:00 | 2023-01-03 15:30 |  | 100% | Jorge [20%]; Logan [20%]; Nils [20%]; Virgile [20%]; Vianney [20%] | 5h |
| 16 | 1.15 | G. SWOT + fiches indiv | 0.12d | 2023-01-03 15:30 | 2023-01-03 16:30 | 15 | 100% | Jorge [20%]; Logan [20%]; Nils [20%]; Virgile [20%]; Vianney [20%] | 1h |
| 17 | 1.16 | G. Config outils | 0.25d | 2023-01-03 16:30 | 2023-01-03 18:30 | 16 | 100% | Jorge [20%]; Logan [20%]; Nils [20%]; Virgile [20%]; Vianney [20%] | 2h |
| 18 | 1.17 | G. Répartition du travail | 0.25d | 2023-01-03 18:30 | 2023-01-04 10:00 | 17 | 100% | Jorge [20%]; Logan [20%]; Nils [20%]; Virgile [20%]; Vianney [20%] | 2h |
| 19 | 1.18 | G. Planning | 0.12d | 2023-01-04 10:00 | 2023-01-04 11:00 | 18 | 100% | Jorge [20%]; Logan [20%]; Nils [20%]; Virgile [20%]; Vianney [20%] | 1h |
| 20 | 2 | **Sprint 2: Sans objet** |  | 2023-01-06 09:00 | 2023-01-12 12:00 | 1 |  |  | 116h |
| 21 | 2.1 | A. Base de tests | 1.12d | 2023-01-07 16:00 | 2023-01-09 10:00 | 38 | 100% | Jorge [50%]; Vianney [50%] | 9h |
| 22 | 2.2 | A. Parser | 1.12d | 2023-01-09 10:00 | 2023-01-10 10:00 | 21 | 100% | Vianney | 9h |
| 23 | 2.3 | A. Decompile | 1.12d | 2023-01-09 10:00 | 2023-01-10 10:00 | 21 | 100% | Jorge | 9h |
| 24 | 2.4 | A. Doc | 0.38d | 2023-01-10 10:00 | 2023-01-10 14:30 | 23, 22 | 100% | Jorge [50%]; Vianney [50%] | 3h |
| 25 | 2.5 | B. Analyse sujet | 0.62d | 2023-01-07 16:00 | 2023-01-08 16:00 | 38 | 100% | Logan [50%]; Nils [50%] | 5h |
| 26 | 2.6 | B. Base de tests | 0.88d | 2023-01-08 16:00 | 2023-01-09 14:30 | 25 | 100% | Logan [50%]; Nils [50%] | 7h |
| 27 | 2.7 | B. Amélioration scripts tests | 0.5d | 2023-01-09 14:30 | 2023-01-09 18:30 | 26 | 100% | Logan [50%]; Nils [50%] | 4h |
| 28 | 2.8 | B. EnvironnementType | 0.12d | 2023-01-09 18:30 | 2023-01-09 19:30 | 27 | 100% | Logan [50%]; Nils [50%] | 1h |
| 29 | 2.9 | B. Passe 3 | 1.12d | 2023-01-10 09:00 | 2023-01-10 19:30 | 28 | 100% | Logan [50%]; Nils [50%] | 9h |
| 30 | 2.10 | B. Doc | 0.38d | 2023-01-11 09:00 | 2023-01-11 12:00 | 29 | 100% | Logan [50%]; Nils [50%] | 3h |
| 31 | 2.11 | C. Analyse sujet | 1.62d | 2023-01-07 16:00 | 2023-01-09 15:30 | 38 | 100% | Virgile | 13h |
| 32 | 2.12 | C. Base + script de tests | 0.5d | 2023-01-09 15:30 | 2023-01-09 19:30 | 31 | 100% | Virgile | 4h |
| 33 | 2.13 | C. Code assembleur | 1.12d | 2023-01-10 09:00 | 2023-01-10 19:30 | 32 | 100% | Virgile | 9h |
| 34 | 2.14 | C. Doc | 0.38d | 2023-01-11 09:00 | 2023-01-11 12:00 | 33 | 100% | Virgile | 3h |
| 35 | 2.15 | G. Préparation suivi 1 | 0.25d | 2023-01-06 09:00 | 2023-01-06 11:00 |  | 100% | Jorge [20%]; Logan [20%]; Nils [20%]; Virgile [20%]; Vianney [20%] | 2h |
| 36 | 2.16 | G. Orga sprint | 0.25d | 2023-01-06 11:00 | 2023-01-06 14:30 | 35 | 100% | Jorge [20%]; Logan [20%]; Nils [20%]; Virgile [20%]; Vianney [20%] | 2h |
| 37 | 2.17 | G. Spécification extension | 0.5d | 2023-01-06 14:30 | 2023-01-06 18:30 | 36 | 100% | Jorge [20%]; Logan [20%]; Nils [20%]; Virgile [20%]; Vianney [20%] | 4h |
| 38 | 2.18 | G. Gestion des risques | 0.38d | 2023-01-06 18:30 | 2023-01-07 16:00 | 37 | 100% | Jorge [20%]; Logan [20%]; Nils [20%]; Virgile [20%]; Vianney [20%] | 3h |
| 39 | 2.19 | G. Préparation suivi 2 | 1d | 2023-01-10 14:30 | 2023-01-11 12:00 | 24 | 100% | Jorge [50%]; Vianney [50%] | 8h |
| 40 | 2.20 | G. Clôture de sprint | 1.12d | 2023-01-11 12:00 | 2023-01-12 12:00 | 39 | 100% | Jorge [20%]; Logan [20%]; Nils [20%]; Virgile [20%]; Vianney [20%] | 9h |

| ID | WBS | Task | Type | Duration | Start | Finish | Predecessors | Complete | Constraint | Resources | Work |
| --- | --- | --- | --- | --- | --- | --- | --- | --- | --- | --- | --- |
| 41 | 3 | **Sprint 3: Avec objet** |  |  | 2023-01-12 12:00 | 2023-01-18 15:30 | 20 |  |  |  | 177h |
| 42 | 3.1 | A. Classes tree |  | 0.25d | 2023-01-12 14:30 | 2023-01-12 16:30 | 63 |  |  | Jorge | 2h |
| 43 | 3.2 | A. Parser |  | 0.25d | 2023-01-12 14:30 | 2023-01-12 16:30 | 63 |  |  | Vianney | 2h |
| 44 | 3.3 | B. Analyse sujet |  | 0.62d | 2023-01-12 14:30 | 2023-01-12 19:30 | 63 |  |  | Logan [50%]; Nils [50%] | 5h |
| 45 | 3.4 | B. Base de tests |  | 1.12d | 2023-01-13 09:00 | 2023-01-13 19:30 | 44 |  |  | Logan [50%]; Nils [50%] | 9h |
| 46 | 3.5 | B. Verify 3 passes |  | 3.38d | 2023-01-14 14:00 | 2023-01-17 18:30 | 45 |  |  | Logan [50%]; Nils [50%] | 27h |
| 47 | 3.6 | B. Doc |  | 0.5d | 2023-01-17 18:30 | 2023-01-18 12:00 | 46 |  |  | Logan [50%]; Nils [50%] | 4h |
| 48 | 3.7 | C. Analyse sujet |  | 0.5d | 2023-01-14 16:00 | 2023-01-15 15:00 | 62 |  |  | Virgile | 4h |
| 49 | 3.8 | C. Base de tests |  | 0.88d | 2023-01-15 15:00 | 2023-01-16 12:00 | 48 |  |  | Virgile | 7h |
| 50 | 3.9 | C. CodeGen |  | 2.25d | 2023-01-16 12:00 | 2023-01-18 12:00 | 49 |  |  | Virgile | 18h |
| 51 | 3.10 | C. Doc |  | 0.25d | 2023-01-18 12:00 | 2023-01-18 15:30 | 50 |  |  | Virgile | 2h |
| 52 | 3.11 | E. Tests calc évidents + redondants |  | 0.62d | 2023-01-12 16:30 | 2023-01-13 11:00 | 42 |  |  | Jorge | 5h |
| 53 | 3.12 | E. Calculs évidents |  | 1.62d | 2023-01-13 11:00 | 2023-01-15 15:00 | 52 |  |  | Jorge | 13h |
| 54 | 3.13 | E. Calculs redondants |  | 1.75d | 2023-01-15 15:00 | 2023-01-17 10:00 | 53 |  |  | Jorge | 14h |
| 55 | 3.14 | E. Doc calc évidents + redondants |  | 0.25d | 2023-01-17 10:00 | 2023-01-17 12:00 | 54 |  |  | Jorge | 2h |
| 56 | 3.15 | E. Tests var inutiles |  | 1d | 2023-01-12 16:30 | 2023-01-13 15:30 | 43 |  |  | Vianney | 8h |
| 57 | 3.16 | E. Var inutiles sans objet |  | 1.12d | 2023-01-13 15:30 | 2023-01-14 19:00 | 56 |  |  | Vianney | 9h |
| 58 | 3.17 | E. Var inutiles avec objet |  | 2.5d | 2023-01-15 14:00 | 2023-01-17 16:30 | 57 |  |  | Vianney | 20h |
| 59 | 3.18 | E. Doc var inutiles |  | 0.38d | 2023-01-17 16:30 | 2023-01-17 19:30 | 58 |  |  | Vianney | 3h |
| 60 | 3.19 | E. Tests optim asm |  | 0.25d | 2023-01-12 14:30 | 2023-01-12 16:30 | 63 |  |  | Virgile | 2h |
| 61 | 3.20 | E. Optim asm |  | 1.5d | 2023-01-12 16:30 | 2023-01-13 19:30 | 60 |  |  | Virgile | 12h |
| 62 | 3.21 | E. Doc optim asm |  | 0.25d | 2023-01-14 14:00 | 2023-01-14 16:00 | 61 |  |  | Virgile | 2h |
| 63 | 3.22 | G. Orga sprint 3 |  | 0.12d | 2023-01-12 12:00 | 2023-01-12 14:30 |  | 100% |  | Jorge [20%]; Logan [20%]; Nils [20%]; Virgile [20%]; Vianney [20%] | 1h |
| 64 | 3.23 | G. Préparation suivi 3 |  | 0.5d | 2023-01-17 12:00 | 2023-01-17 17:30 | 55 |  |  | Jorge | 4h |
| 65 | 3.24 | G. Impact énergétique |  | 0.25d | 2023-01-17 17:30 | 2023-01-17 19:30 | 64 |  |  | Jorge | 2h |
| 66 | 4 | Rendu version intermédiaire | milestone | 0d | 2023-01-16 09:00 | 2023-01-16 00:00 |  |  | must start on 2023-01-16 00:00 |  |  |
| 67 | 5 | Rendu Final | milestone | 0d | 2023-01-23 09:00 | 2023-01-23 00:00 |  |  | must start on 2023-01-23 00:00 |  |  |
| 68 | 6 | Rendu documentation | milestone | 0d | 2023-01-23 09:00 | 2023-01-23 00:00 |  |  | must start on 2023-01-23 00:00 |  |  |
| 69 | 7 | Rendu Bilan | milestone | 0d | 2023-01-25 09:00 | 2023-01-25 00:00 |  |  | must start on 2023-01-25 00:00 |  |  |
| 70 | 8 | Soutenance | milestone | 0d | 2023-01-26 09:00 | 2023-01-26 00:00 |  |  | must start on 2023-01-26 00:00 |  |  |
