# Projet GL

Schedule from Planner, 2023-01-03 to 2023-01-26.
Ensimag

## Calendars

- Default: Mon-Fri 08:00-12:00, 13:00-17:00; Sat-Sun off.

## Resources

| Resource |
| --- |
| Etudiant 5 |
| Etudiant 4 |
| Etudiant 3 |
| Etudiant 2 |
| Etudiant 1 |

## Schedule

| ID | WBS | Task | Type | Duration | Start | Finish | Predecessors | Constraint | Resources | Work |
| --- | --- | --- | --- | --- | --- | --- | --- | --- | --- | --- |
| 1 | 1 | **Analyse lexicosyntaxique** |  |  | 2023-01-03 | 2023-01-04 |  |  |  | 64h |
| 2 | 1.1 | Lexeur |  |  | 2023-01-03 | 2023-01-04 |  |  | Etudiant 2; Etudiant 1 | 32h |
| 3 | 1.2 | Parseur |  |  | 2023-01-03 | 2023-01-04 |  |  | Etudiant 4; Etudiant 3 | 32h |
| 4 | 2 | **Compilateur gérant Hello World** |  |  | 2023-01-05 | 2023-01-10 | 1 |  | Etudiant 5; Etudiant 4; Etudiant 3; Etudiant 2; Etudiant 1 | 83.75h |
| 5 | 2.1 | Tests |  |  | 2023-01-05 | 2023-01-09 |  |  |  | 21.5h |
| 6 | 2.2 | Analyse contextuelle |  |  | 2023-01-05 | 2023-01-09 |  |  |  | 22.5h |
| 7 | 2.3 | Génération de code |  |  | 2023-01-05 | 2023-01-10 |  |  | Etudiant 2 | 24.25h |
| 8 | 2.4 | ... |  |  | 2023-01-05 | 2023-01-06 |  |  |  | 15.5h |
| 9 | 3 | **Compilateur sans objet** |  |  | 2023-01-10 | 2023-01-16 | 4 |  | Etudiant 4; Etudiant 3; Etudiant 2; Etudiant 1 | 59.5h |
| 10 | 3.1 | ... |  |  | 2023-01-10 | 2023-01-12 |  |  |  | 16h |
| 11 | 3.2 | ... |  |  | 2023-01-10 | 2023-01-16 |  |  |  | 35.75h |
| 12 | 4 | Compilateur pour la totalité du langage |  |  | 2023-01-03 | 2023-01-05 |  |  |  | 24h |
| 13 | 5 | Rendu version intermédiaire | milestone | 0d | 2023-01-16 | 2023-01-16 |  | must start on 2023-01-16 |  |  |
| 14 | 6 | Rendu Final | milestone | 0d | 2023-01-23 | 2023-01-23 |  | must start on 2023-01-23 |  |  |
| 15 | 7 | Rendu Bilan | milestone | 0d | 2023-01-25 | 2023-01-25 |  | must start on 2023-01-25 |  |  |
| 16 | 8 | Rendu documentation | milestone | 0d | 2023-01-23 | 2023-01-23 |  | must start on 2023-01-23 |  |  |
| 17 | 9 | Soutenance | milestone | 0d | 2023-01-26 | 2023-01-26 |  | must start on 2023-01-26 |  |  |
